# スケジュール_TWLSystemMenu

Schedule from MS Project, 2008-02-08 to 2008-06-26.
莉ｻ螟ｩ蝣よｪ蠑丈ｼ夂､ｾ

## Calendars

- 標準: Mon-Fri 08:00-12:00, 13:00-17:00; Sat-Sun off.

## Resources

| Resource | Group |
| --- | --- |
| 宮本昌幸 | RED |
| 大江徹 | RED |
| 中島高伸 | RED |
| 吉岡照幸 | RED |
| 村上豊 | RED |
| 白井達広 | RED |
| 神川洋司 | RED |
| 佐藤雅樹 | RED |
| 三田健太朗 | RED |
| 水口裕基 | RED |
| 赤羽淳平 | RED |
| 西川猛司 | RED |
| 吉田光寿 | RED |
| 安達 洋明 | PSEG1 |
| 稲葉 公崇 | PSEG1 |
| 大島 洋一 | PSEG1 |
| 岡島 学 | PSEG1 |
| 奥畑 亮馬 | PSEG1 |
| 北瀬 裕丈 | PSEG1 |
| 白川 英一 | PSEG1 |
| 清木 昌 | PSEG1 |
| 照井 章生 | PSEG1 |
| 徳永 英治 | PSEG1 |
| 西本 隆 | PSEG1 |
| 橋本 英之 | PSEG1 |
| 畠本 稔 | PSEG1 |
| 廣瀬 和樹 | PSEG1 |
| 安本 吉孝 | PSEG1 |
| 矢田 裕人 | PSEG1 |
| 吉崎 浩二 | PSEG1 |
| Atheros | Atheros |
| BroadOn | BroadOn |
| 遠藤高志 | PSEG2 |
| 松島愛佑 | ＵＩＧ |
| 荒木 勉 | ＵＩＧ |
| 川瀬 智広 | ＵＩＧ |
| 河野裕之 | ＵＩＧ |
| 小野沢祐貴 | ＵＩＧ |
| ネットワーク開発部 | ネ開 |

## Schedule

| ID | WBS | Task | Type | Duration | Start | Finish | Total slack | Constraint | Resources | Work |
| --- | --- | --- | --- | --- | --- | --- | --- | --- | --- | --- |
| 1 | 1 | TS3(20台)先行納品開始 | milestone | 1d? | 2008-02-13 | 2008-02-13 | 96d | start no earlier than 2008-02-13 |  |  |
| 2 | 2 | ワーキングモデル(10台 0x01=7台, 0x10=3台)納品予定 | milestone | 1d? | 2008-02-15 | 2008-02-15 | 94d | start no earlier than 2008-02-15 |  |  |
| 3 | 3 | IS-TWL-DEBUGGER(5台)先行納品開始 | milestone | 1d? | 2008-03-03 | 2008-03-03 | 83d | start no earlier than 2008-03-03 |  |  |
| 4 | 4 | TS3（380台)納品開始 | milestone | 1d? | 2008-03-13 | 2008-03-13 | 75d | start no earlier than 2008-03-13 |  |  |
| 5 | 5 | ミニ量産試作(200台) | milestone | 3d? | 2008-02-26 | 2008-02-28 | 85d | finish no earlier than 2008-02-28 |  |  |
| 6 | 6 | IS-TWL-CAPTURE試作品納品開始 | milestone | 1d? | 2008-04-01 | 2008-04-01 | 62d | start no earlier than 2008-04-01 |  |  |
| 7 | 7 | IS-TWL-DEBUGGER(100台) | milestone | 13d? | 2008-04-14 | 2008-04-30 | 41d | finish no earlier than 2008-04-30 |  |  |
| 8 | 8 | 量産試作1(600台) | milestone | 5d? | 2008-04-21 | 2008-04-25 | 44d | finish no earlier than 2008-04-25 |  |  |
| 9 | 9 | IS-TWL-DEBUGGER(200台) | milestone | 12d? | 2008-05-01 | 2008-05-16 | 29d | finish no earlier than 2008-05-16 |  |  |
| 10 | 10 | IS-TWL-DEBUUGER(300台) | milestone | 1d? | 2008-05-20 | 2008-05-20 | 27d | start no earlier than 2008-05-20 |  |  |
| 11 | 11 | 量産試作2(600台) | milestone | 6d? | 2008-05-23 | 2008-05-30 | 19d | finish no earlier than 2008-05-30 |  |  |
| 12 | 12 | IS-TWL-DEBUGGER(月産500台) | milestone | 1d? | 2008-06-02 | 2008-06-02 | 18d | start no earlier than 2008-06-02 |  |  |
| 13 | 13 | 量産試作3(600台) | milestone | 5d? | 2008-06-20 | 2008-06-26 | 0d | finish no earlier than 2008-06-26 |  |  |
| 15 | 14 | 無線モジュール（ファームロード対応版）受領 |  | 1d? | 2008-02-08 | 2008-02-08 | 99d |  |  |  |
| 17 | 15 | **UIGシステムメニュー** |  | 1d? | 2008-02-08 | 2008-02-08 | 99d |  |  | 72h |
| 18 | 15.1 | 仕様策定 |  | 1d? | 2008-02-08 | 2008-02-08 | 99d |  | 松島愛佑 | 8h |
| 19 | 15.2 | フォント |  | 1d? | 2008-02-08 | 2008-02-08 | 99d |  |  |  |
| 20 | 15.3 | ランチャー |  | 0.5d? | 2008-02-08 | 2008-02-08 | 99.5d |  | 川瀬 智広; 荒木 勉 | 8h |
| 21 | 15.4 | 本体設定 |  | 1d? | 2008-02-08 | 2008-02-08 | 99d |  | 小野沢祐貴 | 8h |
| 22 | 15.5 | ショップ |  | 1d? | 2008-02-08 | 2008-02-08 | 99d |  |  |  |
| 23 | 15.6 | 写真帳 |  | 1d? | 2008-02-08 | 2008-02-08 | 99d |  | 河野裕之 | 8h |
| 24 | 15.7 | ピクトチャット |  | 1d? | 2008-02-08 | 2008-02-08 | 99d |  | 川瀬 智広; 荒木 勉 | 16h |
| 25 | 15.8 | DSダウンロードプレイ |  | 1d? | 2008-02-08 | 2008-02-08 | 99d |  | 川瀬 智広; 荒木 勉 | 16h |
| 26 | 15.9 | 新型配信システム |  | 1d? | 2008-02-08 | 2008-02-08 | 99d |  | ネットワーク開発部 | 8h |
| 28 | 16 | NANDファーム |  | 1d? | 2008-02-08 | 2008-02-08 | 99d |  | 村上豊 | 8h |

| ID | WBS | Task | Duration | Start | Finish | Total slack | Resources | Work |
| --- | --- | --- | --- | --- | --- | --- | --- | --- |
| 30 | 17 | **REDシステムメニュー** | 1d? | 2008-02-08 | 2008-02-08 | 99d |  | 304h |
| 31 | 17.1 | **ランチャー** | 1d? | 2008-02-08 | 2008-02-08 | 99d |  | 280h |
| 32 | 17.1.1 | **アプリ起動** | 1d? | 2008-02-08 | 2008-02-08 | 99d |  | 40h |
| 33 | 17.1.1.1 | **起動時のプロパティ** | 1d? | 2008-02-08 | 2008-02-08 | 99d |  |  |
| 34 | 17.1.1.1.1 | 鍵の引渡し | 1d? | 2008-02-08 | 2008-02-08 | 99d |  |  |
| 35 | 17.1.1.1.2 | NANDファイルのアクセス制限 | 1d? | 2008-02-08 | 2008-02-08 | 99d |  |  |
| 36 | 17.1.1.1.3 | カード電源状態 | 1d? | 2008-02-08 | 2008-02-08 | 99d |  |  |
| 37 | 17.1.1.1.4 | カード活線挿抜可否 | 1d? | 2008-02-08 | 2008-02-08 | 99d |  |  |
| 38 | 17.1.1.1.5 | SDカードアクセス可否 | 1d? | 2008-02-08 | 2008-02-08 | 99d |  |  |
| 39 | 17.1.1.1.6 | Codecモード切替 | 1d? | 2008-02-08 | 2008-02-08 | 99d |  |  |
| 40 | 17.1.1.1.7 | SCFGレジスタロック | 1d? | 2008-02-08 | 2008-02-08 | 99d |  |  |
| 41 | 17.1.1.2 | **起動チェック** | 1d? | 2008-02-08 | 2008-02-08 | 99d |  |  |
| 42 | 17.1.1.2.1 | **AGBカートリッジが必要なソフトは起動禁止** | 1d? | 2008-02-08 | 2008-02-08 | 99d |  |  |
| 43 | 17.1.1.2.1.1 | 該当ソフト調査 | 1d? | 2008-02-08 | 2008-02-08 | 99d |  |  |
| 44 | 17.1.1.2.1.2 | チェックルーチン | 1d? | 2008-02-08 | 2008-02-08 | 99d |  |  |
| 45 | 17.1.1.3 | **アプリ認証処理** | 1d? | 2008-02-08 | 2008-02-08 | 99d |  | 24h |
| 46 | 17.1.1.3.1 | NTRアプリのR4対策 | 1d? | 2008-02-08 | 2008-02-08 | 99d | 村上豊 | 8h |
| 47 | 17.1.1.3.2 | **TWLアプリ** | 1d? | 2008-02-08 | 2008-02-08 | 99d |  | 16h |
| 48 | 17.1.1.3.2.1 | カードアプリ | 1d? | 2008-02-08 | 2008-02-08 | 99d | 吉田光寿 | 8h |
| 49 | 17.1.1.3.2.2 | NANDアプリ | 1d? | 2008-02-08 | 2008-02-08 | 99d | 吉田光寿 | 8h |
| 50 | 17.1.1.4 | NTRモード起動 | 1d? | 2008-02-08 | 2008-02-08 | 99d | 中島高伸 | 8h |
| 51 | 17.1.1.5 | NTR無線パッチ | 1d? | 2008-02-08 | 2008-02-08 | 99d | 中島高伸 | 8h |
| 52 | 17.1.2 | **HWリセット制御** | 1d? | 2008-02-08 | 2008-02-08 | 99d |  | 32h |
| 53 | 17.1.2.1 | **任意アプリの直接起動** | 1d? | 2008-02-08 | 2008-02-08 | 99d |  | 24h |
| 54 | 17.1.2.1.1 | 未ロード状態のアプリ起動 | 1d? | 2008-02-08 | 2008-02-08 | 99d | 吉田光寿 | 8h |
| 55 | 17.1.2.1.2 | メモリ上にロードされた状態のアプリ起動 | 1d? | 2008-02-08 | 2008-02-08 | 99d | 吉田光寿 | 8h |
| 56 | 17.1.2.1.3 | NANDのTMPフォルダに一時格納された状態のアプリ起動 | 1d? | 2008-02-08 | 2008-02-08 | 99d | 吉田光寿 | 8h |
| 57 | 17.1.2.2 | ランチャーメニューに戻る | 1d? | 2008-02-08 | 2008-02-08 | 99d | 吉田光寿 | 8h |
| 58 | 17.1.2.3 | ファイル関連付けアプリ起動 | 1d? | 2008-02-08 | 2008-02-08 | 99d |  |  |
| 59 | 17.1.2.4 | カードセキュリティの解除 | 1d? | 2008-02-08 | 2008-02-08 | 99d |  |  |
| 60 | 17.1.3 | Hot/Coldスタート判定 | 0.5d? | 2008-02-08 | 2008-02-08 | 99.5d | 中島高伸; 吉田光寿 | 8h |
| 61 | 17.1.4 | TMPフォルダクリーン | 1d? | 2008-02-08 | 2008-02-08 | 99d | 吉田光寿 | 8h |

| ID | WBS | Task | Duration | Start | Finish | Total slack | Resources | Work |
| --- | --- | --- | --- | --- | --- | --- | --- | --- |
| 62 | 17.1.5 | **本体設定データ** | 1d? | 2008-02-08 | 2008-02-08 | 99d |  | 16h |
| 63 | 17.1.5.1 | フォーマット | 1d? | 2008-02-08 | 2008-02-08 | 99d | 吉岡照幸 | 8h |
| 64 | 17.1.5.2 | API | 1d? | 2008-02-08 | 2008-02-08 | 99d | 吉岡照幸 | 8h |
| 65 | 17.1.6 | 初回バックライトON | 1d? | 2008-02-08 | 2008-02-08 | 99d |  |  |
| 66 | 17.1.7 | **無線** | 1d? | 2008-02-08 | 2008-02-08 | 99d |  | 64h |
| 67 | 17.1.7.1 | **新無線ファームロード** | 1d? | 2008-02-08 | 2008-02-08 | 99d |  | 40h |
| 68 | 17.1.7.1.1 | **ファーム** | 1d? | 2008-02-08 | 2008-02-08 | 99d |  | 8h |
| 69 | 17.1.7.1.1.1 | ファーム作成 | 1d? | 2008-02-08 | 2008-02-08 | 99d | Atheros | 8h |
| 70 | 17.1.7.1.2 | ダミーROMヘッダ作成ツール | 1d? | 2008-02-08 | 2008-02-08 | 99d | 宮本昌幸 | 8h |
| 71 | 17.1.7.1.3 | **実装** | 1d? | 2008-02-08 | 2008-02-08 | 99d |  | 24h |
| 72 | 17.1.7.1.3.1 | 無線ライブラリ | 1d? | 2008-02-08 | 2008-02-08 | 99d | 佐藤雅樹 | 8h |
| 73 | 17.1.7.1.3.2 | ランチャー仮実装 | 1d? | 2008-02-08 | 2008-02-08 | 99d | 宮本昌幸 | 8h |
| 74 | 17.1.7.1.3.3 | ランチャー本実装 | 1d? | 2008-02-08 | 2008-02-08 | 99d | 宮本昌幸 | 8h |
| 75 | 17.1.7.2 | **WiFiエミュレーション** | 1d? | 2008-02-08 | 2008-02-08 | 99d |  | 16h |
| 76 | 17.1.7.2.1 | コンポーネント作成 | 1d? | 2008-02-08 | 2008-02-08 | 99d | 水口裕基 | 8h |
| 77 | 17.1.7.2.2 | ロード処理 | 1d? | 2008-02-08 | 2008-02-08 | 99d | 水口裕基 | 8h |
| 78 | 17.1.7.3 | 無線終端処理 | 1d? | 2008-02-08 | 2008-02-08 | 99d | 佐藤雅樹 | 8h |
| 79 | 17.1.8 | アプリリスト取得 | 1d? | 2008-02-08 | 2008-02-08 | 99d | 吉田光寿 | 8h |
| 80 | 17.1.9 | **バナー** | 1d? | 2008-02-08 | 2008-02-08 | 99d |  | 24h |
| 81 | 17.1.9.1 | 仕様策定 | 1d? | 2008-02-08 | 2008-02-08 | 99d | 吉岡照幸 | 8h |
| 82 | 17.1.9.2 | バナードライバ | 1d? | 2008-02-08 | 2008-02-08 | 99d | 吉田光寿 | 8h |
| 83 | 17.1.9.3 | セーブバナーファイル | 0.5d? | 2008-02-08 | 2008-02-08 | 99.5d | 畠本 稔; 吉崎 浩二 | 8h |
| 84 | 17.1.10 | **活線挿抜** | 1d? | 2008-02-08 | 2008-02-08 | 99d |  | 72h |
| 85 | 17.1.10.1 | **ロード** | 1d? | 2008-02-08 | 2008-02-08 | 99d |  | 32h |
| 86 | 17.1.10.1.1 | NTRカード対応 | 1d? | 2008-02-08 | 2008-02-08 | 99d | 赤羽淳平 | 8h |
| 87 | 17.1.10.1.2 | TWLカード対応 | 1d? | 2008-02-08 | 2008-02-08 | 99d | 赤羽淳平 | 8h |
| 88 | 17.1.10.1.3 | カードType1,2対応 | 1d? | 2008-02-08 | 2008-02-08 | 99d | 赤羽淳平 | 8h |
| 89 | 17.1.10.1.4 | Blowfishデコード | 1d? | 2008-02-08 | 2008-02-08 | 99d | 赤羽淳平 | 8h |
| 90 | 17.1.10.2 | 表示との連動 | 1d? | 2008-02-08 | 2008-02-08 | 99d | 赤羽淳平 | 8h |
| 91 | 17.1.10.3 | 起動との連動 | 1d? | 2008-02-08 | 2008-02-08 | 99d | 赤羽淳平 | 8h |
| 92 | 17.1.10.4 | 挿抜負荷耐性 | 1d? | 2008-02-08 | 2008-02-08 | 99d | 赤羽淳平 | 8h |
| 93 | 17.1.10.5 | ARM9/ARM7対応 | 1d? | 2008-02-08 | 2008-02-08 | 99d | 赤羽淳平 | 8h |
| 94 | 17.1.10.6 | 速度チューニング | 1d? | 2008-02-08 | 2008-02-08 | 99d | 赤羽淳平 | 8h |

| ID | WBS | Task | Duration | Start | Finish | Total slack | Resources | Work |
| --- | --- | --- | --- | --- | --- | --- | --- | --- |
| 95 | 17.1.11 | **ホットスポットサーチ** | 1d? | 2008-02-08 | 2008-02-08 | 99d |  |  |
| 96 | 17.1.11.1 | ライブラリ作成 | 1d? | 2008-02-08 | 2008-02-08 | 99d |  |  |
| 97 | 17.1.11.2 | ランチャーへの組み込み | 1d? | 2008-02-08 | 2008-02-08 | 99d |  |  |
| 98 | 17.1.12 | バッテリエクステンション | 1d? | 2008-02-08 | 2008-02-08 | 99d | 村上豊 | 8h |
| 99 | 17.2 | 本体設定 | 0.5d? | 2008-02-08 | 2008-02-08 | 99.5d | 吉田光寿; 吉岡照幸 | 8h |
| 100 | 17.3 | WiFi設定 | 1d? | 2008-02-08 | 2008-02-08 | 99d |  |  |
| 101 | 17.4 | **本体初期化** | 1d? | 2008-02-08 | 2008-02-08 | 99d |  | 16h |
| 102 | 17.4.1 | ツール | 1d? | 2008-02-08 | 2008-02-08 | 99d | 神川洋司 | 8h |
| 103 | 17.4.2 | ライブラリ | 1d? | 2008-02-08 | 2008-02-08 | 99d | 神川洋司 | 8h |
| 105 | 18 | **SDK** | 1d? | 2008-02-08 | 2008-02-08 | 99d |  | 152h |
| 106 | 18.1 | **ツール** | 1d? | 2008-02-08 | 2008-02-08 | 99d |  | 56h |
| 107 | 18.1.1 | **makerom** | 1d? | 2008-02-08 | 2008-02-08 | 99d |  | 32h |
| 108 | 18.1.1.1 | NTR署名対応 | 1d? | 2008-02-08 | 2008-02-08 | 99d | 吉岡照幸 | 8h |
| 109 | 18.1.1.2 | ペアレンタルコントロール対応 | 1d? | 2008-02-08 | 2008-02-08 | 99d | 吉岡照幸 | 8h |
| 110 | 18.1.1.3 | SD使用可能特別版対応 | 1d? | 2008-02-08 | 2008-02-08 | 99d | 吉岡照幸 | 8h |
| 111 | 18.1.1.4 | システム/ショップアプリ開発特別版対応 | 1d? | 2008-02-08 | 2008-02-08 | 99d | 吉岡照幸 | 8h |
| 112 | 18.1.2 | **maketad** | 1d? | 2008-02-08 | 2008-02-08 | 99d |  | 8h |
| 113 | 18.1.2.1 | バイナリファイル対応 | 1d? | 2008-02-08 | 2008-02-08 | 99d | 大島 洋一 | 8h |
| 114 | 18.1.2.2 | 共有コンテンツ対応 | 1d? | 2008-02-08 | 2008-02-08 | 99d |  |  |
| 115 | 18.1.3 | **makebanner** | 1d? | 2008-02-08 | 2008-02-08 | 99d |  | 8h |
| 116 | 18.1.3.1 | NTRアイコンIN→TWLバナーOUT対応 | 1d? | 2008-02-08 | 2008-02-08 | 99d | 吉岡照幸 | 8h |
| 117 | 18.1.4 | bannercvtr | 1d? | 2008-02-08 | 2008-02-08 | 99d | 遠藤高志 | 8h |
| 118 | 18.2 | **ライブラリ** | 1d? | 2008-02-08 | 2008-02-08 | 99d |  | 96h |
| 119 | 18.2.1 | reboot | 1d? | 2008-02-08 | 2008-02-08 | 99d | 中島高伸 | 8h |
| 120 | 18.2.2 | os/launcherParam | 1d? | 2008-02-08 | 2008-02-08 | 99d | 吉田光寿 | 8h |
| 121 | 18.2.3 | lcfg | 1d? | 2008-02-08 | 2008-02-08 | 99d | 吉岡照幸 | 8h |
| 122 | 18.2.4 | nam | 1d? | 2008-02-08 | 2008-02-08 | 99d | 畠本 稔 | 8h |
| 123 | 18.2.5 | マイコン | 1d? | 2008-02-08 | 2008-02-08 | 99d | 村上豊 | 8h |
| 124 | 18.2.6 | カメラ | 1d? | 2008-02-08 | 2008-02-08 | 99d | 村上豊 | 8h |
| 125 | 18.2.7 | Codec | 1d? | 2008-02-08 | 2008-02-08 | 99d | 神川洋司 | 8h |

| ID | WBS | Task | Duration | Start | Finish | Total slack | Resources | Work |
| --- | --- | --- | --- | --- | --- | --- | --- | --- |
| 126 | 18.2.8 | **FS** | 1d? | 2008-02-08 | 2008-02-08 | 99d |  | 40h |
| 127 | 18.2.8.1 | 電源OFF,リセット時の終端処理 | 1d? | 2008-02-08 | 2008-02-08 | 99d | 白井達広 | 8h |
| 128 | 18.2.8.2 | FSのAES暗号化 | 0.5d? | 2008-02-08 | 2008-02-08 | 99.5d | 白井達広; 村上豊 | 8h |
| 129 | 18.2.8.3 | 速度チューニング | 1d? | 2008-02-08 | 2008-02-08 | 99d | 吉崎 浩二 | 8h |
| 130 | 18.2.8.4 | SRLのハッシュチェック | 1d? | 2008-02-08 | 2008-02-08 | 99d | 吉崎 浩二 | 8h |
| 131 | 18.2.8.5 | NANDアクセス権管理 | 0.33d? | 2008-02-08 | 2008-02-08 | 99.67d | 吉崎 浩二; 吉岡照幸; 廣瀬 和樹 | 8h |
| 134 | 19 | **eTicket** | 1d? | 2008-02-08 | 2008-02-08 | 99d |  | 8h |
| 135 | 19.1 | ESライブラリ | 1d? | 2008-02-08 | 2008-02-08 | 99d | BroadOn | 8h |
| 136 | 19.2 | **CLSサーバ** | 1d? | 2008-02-08 | 2008-02-08 | 99d |  |  |
| 137 | 19.2.1 | 開発用セットアップ | 1d? | 2008-02-08 | 2008-02-08 | 99d |  |  |
| 138 | 19.2.2 | 製品用セットアップ | 1d? | 2008-02-08 | 2008-02-08 | 99d |  |  |
| 139 | 19.3 | **ショップサーバ** | 1d? | 2008-02-08 | 2008-02-08 | 99d |  |  |
| 140 | 19.3.1 | 開発用セットアップ | 1d? | 2008-02-08 | 2008-02-08 | 99d |  |  |
| 141 | 19.3.2 | 製品用セットアップ | 1d? | 2008-02-08 | 2008-02-08 | 99d |  |  |
| 143 | 20 | **IS** | 1d? | 2008-02-08 | 2008-02-08 | 99d |  |  |
| 144 | 20.1 | IS-TWL-DEBUGGER | 1d? | 2008-02-08 | 2008-02-08 | 99d |  |  |
| 145 | 20.2 | IS-TWL-CAPUTURE | 1d? | 2008-02-08 | 2008-02-08 | 99d |  |  |
